# PF-01_cronograma

Schedule from MS Project XML, 2026-10-10 to 2026-11-26, A marks actual dates.

## Calendars

- Estándar: Mon-Fri 09:00-13:00, 14:00-18:00; Sat-Sun off. Exceptions (off unless hours are given): 2026-10-10 to 2026-10-11 09:00-13:00, 14:00-18:00 (Planificación PF-01 en fin de semana).

## Schedule

| ID | WBS | Task | Type | Duration | Start | Finish | Predecessors | Complete | Remaining | Baseline start | Baseline finish | Baseline duration | Total slack | Constraint | Issue | Fase | Número1 |
| --- | --- | --- | --- | --- | --- | --- | --- | --- | --- | --- | --- | --- | --- | --- | --- | --- | --- |
| 1 | 1 | **1 Gestión** |  | 33d | 2026-10-10 A | 2026-11-23 |  | 80% | 6.6d | 2026-10-12 | 2026-11-23 | 31d | 0d |  |  |  |  |
| 2 | 1.1 | 1.1 Acta y alcance |  | 2d | 2026-10-10 A | 2026-10-11 A |  | 100% |  | 2026-10-12 | 2026-10-13 | 2d |  |  | #2 | 1 Planificación | 1 |
| 3 | 1.2 | **1.2 Plan y línea base en Project** |  | 1d | 2026-10-11 A | 2026-10-11 A |  | 100% |  | 2026-10-14 | 2026-10-16 | 3d |  |  | #3 | 1 Planificación | 1.5 |
| 4 | 1.2.1 | EDT, Gantt y plan GitHub |  | 1d | 2026-10-11 A | 2026-10-11 A | 2 | 100% |  | 2026-10-14 | 2026-10-14 | 1d |  |  | #3 | 1 Planificación |  |
| 5 | 1.2.2 | Plan aprobado | milestone | 0d | 2026-10-11 A | 2026-10-11 A | 4 | 100% |  | 2026-10-14 | 2026-10-14 |  |  |  | #3 | 1 Planificación |  |
| 6 | 1.2.3 | Línea base, repositorio y plan GitHub |  | 1d | 2026-10-11 A | 2026-10-11 A | 5 | 100% |  | 2026-10-15 | 2026-10-16 | 2d |  |  | #3 | 1 Planificación |  |
| 7 | 1.3 | 1.3 Cierre y desvíos |  | 1d | 2026-11-23 | 2026-11-23 | 20 |  |  | 2026-11-23 | 2026-11-23 | 1d | 0d |  | #13 | 3 Cierre | 1 |
| 8 | 1.4 | Listo para cierre | milestone | 0d | 2026-11-23 | 2026-11-23 | 7 |  |  | 2026-11-23 | 2026-11-23 |  | 0d |  | #13 | 3 Cierre |  |
| 9 | 2 | **2 Datos** |  | 6d | 2026-11-02 | 2026-11-09 |  |  |  | 2026-11-02 | 2026-11-09 | 6d | 0d |  |  |  |  |
| 10 | 2.1 | 2.1 Extracción |  | 2d | 2026-11-02 | 2026-11-03 | 6 |  |  | 2026-11-02 | 2026-11-03 | 2d | 0d | start no earlier than 2026-11-02 | #4 | 2 Ejecución | 4.5 |
| 11 | 2.2 | 2.2 Validación |  | 2d | 2026-11-04 | 2026-11-05 | 10 |  |  | 2026-11-04 | 2026-11-05 | 2d | 0d |  | #5 | 2 Ejecución | 2.5 |
| 12 | 2.3 | 2.3 Modelo de datos Oracle |  | 2d | 2026-11-06 | 2026-11-09 | 11 |  |  | 2026-11-06 | 2026-11-09 | 2d | 0d |  | #6 | 2 Ejecución | 3.5 |
| 13 | 3 | **3 Análisis** |  | 4d | 2026-11-10 | 2026-11-13 |  |  |  | 2026-11-10 | 2026-11-13 | 4d | 0d |  |  |  |  |
| 14 | 3.1 | 3.1 Exploración |  | 1d | 2026-11-10 | 2026-11-10 | 12 |  |  | 2026-11-10 | 2026-11-10 | 1d | 0d |  | #7 | 2 Ejecución | 1 |
| 15 | 3.2 | 3.2 Indicadores y matriz |  | 2d | 2026-11-11 | 2026-11-12 | 14 |  |  | 2026-11-11 | 2026-11-12 | 2d | 0d |  | #8 | 2 Ejecución | 2 |
| 16 | 3.3 | 3.3 Validación de resultados |  | 1d | 2026-11-13 | 2026-11-13 | 15 |  |  | 2026-11-13 | 2026-11-13 | 1d | 0d |  | #9 | 2 Ejecución | 1 |
| 17 | 4 | **4 Producto** |  | 5d | 2026-11-16 | 2026-11-20 |  |  |  | 2026-11-16 | 2026-11-20 | 5d | 0d |  |  |  |  |
| 18 | 4.1 | 4.1 Tablero Power BI |  | 3d | 2026-11-16 | 2026-11-18 | 16 |  |  | 2026-11-16 | 2026-11-18 | 3d | 0d |  | #10 | 2 Ejecución | 4 |
| 19 | 4.2 | 4.2 Informe |  | 1d | 2026-11-19 | 2026-11-19 | 18 |  |  | 2026-11-19 | 2026-11-19 | 1d | 0d |  | #11 | 2 Ejecución | 1.5 |
| 20 | 4.3 | 4.3 README |  | 1d | 2026-11-20 | 2026-11-20 | 19 |  |  | 2026-11-20 | 2026-11-20 | 1d | 0d |  | #12 | 2 Ejecución | 1 |
| 21 | 5 | **5 Comunicación** |  | 3d | 2026-11-24 | 2026-11-26 |  |  |  | 2026-11-24 | 2026-11-26 | 3d | 0d |  |  |  |  |
| 22 | 5.1 | 5.1 Post |  | 2d | 2026-11-24 | 2026-11-25 | 8 |  |  | 2026-11-24 | 2026-11-25 | 2d | 0d |  | #14 | 3 Cierre | 0.5 |
| 23 | 5.2 | 5.2 Documento PDF |  | 2d | 2026-11-24 | 2026-11-25 | 8 |  |  | 2026-11-24 | 2026-11-25 | 2d | 0d |  | #15 | 3 Cierre | 1.5 |
| 24 | 5.3 | Publicación en LinkedIn | milestone | 0d | 2026-11-26 | 2026-11-26 | 22, 23 |  |  | 2026-11-26 | 2026-11-26 |  | 0d | start no earlier than 2026-11-26 | #16 | 3 Cierre |  |
| 25 | 5.4 | 5.3 Destacados y registro |  | 1d | 2026-11-26 | 2026-11-26 | 24 |  |  | 2026-11-26 | 2026-11-26 | 1d | 0d |  | #16 | 3 Cierre | 0.5 |
